# 软件开发

Schedule from MS Project, 2017-03-14 to 2017-04-20.

## Calendars

- 标准: Mon-Fri 08:00-12:00, 13:00-17:00; Sat-Sun off.

## Resources

| Resource |
| --- |
| 管理人员 |
| 项目经理 |
| 分析人员 |
| 柳鹏 |
| 测试人员 |
| 培训人员 |
| 技术联络人员 |
| 部署小组 |
| 张闯 |
| 陈佳荧 |

## Schedule

| ID | WBS | Task | Type | Duration | Start | Finish | Predecessors | Total slack | Constraint | Resources | Work |
| --- | --- | --- | --- | --- | --- | --- | --- | --- | --- | --- | --- |
| 1 | 1 | **开发** |  | 28d | 2017-03-14 | 2017-04-20 |  | 0d |  |  | 716h |
| 2 | 1.1 | 审阅功能规范 |  | 0.5d | 2017-03-14 | 2017-03-14 |  | 0d |  | 柳鹏; 张闯 | 8h |
| 3 | 1.2 | 确定模块化/分层设计参数 |  | 1d | 2017-03-14 | 2017-03-15 | 2 | 0d |  | 柳鹏; 张闯 | 16h |
| 4 | 1.3 | 分派任务给开发人员 |  | 0.5d | 2017-03-15 | 2017-03-15 | 3 | 0d |  | 柳鹏 | 4h |
| 5 | 1.4 | **编写代码** |  | 21d | 2017-03-16 | 2017-04-13 | 4 |  |  |  | 568h |
| 6 | 1.4.1 | **文档管理** |  | 18d | 2017-03-16 | 2017-04-10 |  |  |  |  | 288h |
| 7 | 1.4.1.1 | 文件评论 |  | 5d | 2017-03-16 | 2017-03-22 |  | 13d |  | 陈佳荧; 柳鹏 | 80h |
| 8 | 1.4.1.2 | 文件热度 |  | 3d | 2017-03-23 | 2017-03-27 |  | 18d | start no earlier than 2017-03-23 | 陈佳荧; 柳鹏 | 48h |
| 9 | 1.4.1.3 | 文件审批 |  | 5d | 2017-03-28 | 2017-04-03 |  | 13d | start no earlier than 2017-03-28 | 柳鹏 | 40h |
| 10 | 1.4.1.4 | 用户订阅 |  | 5d | 2017-03-16 | 2017-03-22 |  | 13d |  | 张闯; 陈佳荧 | 80h |
| 11 | 1.4.1.5 | 消息推送 |  | 5d | 2017-04-04 | 2017-04-10 |  | 8d | start no earlier than 2017-04-04 | 柳鹏 | 40h |
| 12 | 1.4.2 | **技术学院** |  | 3d | 2017-04-11 | 2017-04-13 |  |  |  |  | 24h |
| 13 | 1.4.2.1 | eLearning 登录集成 |  | 3d | 2017-04-11 | 2017-04-13 |  | 0d |  | 柳鹏 | 24h |
| 14 | 1.4.3 | **招投标应答** |  | 6d | 2017-03-23 | 2017-03-30 |  |  |  |  | 96h |
| 15 | 1.4.3.1 | 提问回答 |  | 6d | 2017-03-23 | 2017-03-30 |  | 15d | start no earlier than 2017-03-23 | 张闯; 陈佳荧 | 96h |
| 16 | 1.4.4 | **报表导出** |  | 10d | 2017-03-31 | 2017-04-13 |  |  |  |  | 160h |
| 17 | 1.4.4.1 | 导出关键统计数据 |  | 10d | 2017-03-31 | 2017-04-13 |  | 0d |  | 张闯; 陈佳荧 | 160h |
| 18 | 1.5 | 开发人员测试(初步调试) |  | 5d | 2017-04-14 | 2017-04-20 | 5 | 0d | start no earlier than 2017-04-14 | 柳鹏; 陈佳荧; 张闯 | 120h |
| 19 | 1.6 | 开发工作完毕 | milestone | 0d | 2017-04-20 | 2017-04-20 | 18 | 0d |  | 陈佳荧; 柳鹏; 张闯 |  |
