# 软件开发

Schedule from MS Project, 2017-05-02 to 2017-06-02.

## Calendars

- 标准: Mon-Fri 08:00-12:00, 13:00-17:00; Sat-Sun off.

## Resources

| Resource |
| --- |
| 管理人员 |
| 项目经理 |
| 分析人员 |
| 柳鹏 |
| 测试人员 |
| 培训人员 |
| 技术联络人员 |
| 部署小组 |
| 张闯 |
| 陈佳荧 |
| 赵文磊 |
| 张磊 |

## Schedule

| ID | WBS | Task | Type | Duration | Start | Finish | Predecessors | Total slack | Free slack | Constraint | Resources | Work |
| --- | --- | --- | --- | --- | --- | --- | --- | --- | --- | --- | --- | --- |
| 1 | 1 | **环境准备** |  | 9d | 2017-05-02 | 2017-05-12 |  |  |  |  |  | 72h |
| 2 | 1.1 | 基础环境准备 |  | 5d | 2017-05-02 | 2017-05-08 |  | 4d |  |  | 赵文磊 | 40h |
| 3 | 1.2 | SQL Server 部署 |  | 2d | 2017-05-09 | 2017-05-10 |  | 38d |  | start no earlier than 2017-05-09 | 赵文磊 | 16h |
| 4 | 1.3 | SharePoint 2016环境部署 |  | 2d | 2017-05-11 | 2017-05-12 |  | 36d |  | start no earlier than 2017-05-11 | 赵文磊 | 16h |
| 5 | 2 | **配置** |  | 8d | 2017-05-15 | 2017-05-24 | 1 |  |  |  |  | 64h |
| 6 | 2.1 | RMS加密 |  | 4d | 2017-05-15 | 2017-05-18 |  | 4d |  |  | 赵文磊 | 32h |
| 7 | 2.2 | 文档水印 |  | 4d | 2017-05-19 | 2017-05-24 |  | 28d |  | start no earlier than 2017-05-19 | 赵文磊 | 32h |
| 8 | 3 | **UI设计** |  | 7d | 2017-05-02 | 2017-05-10 |  |  |  |  |  | 56h |
| 9 | 3.1 | 页面配色 |  | 2d | 2017-05-02 | 2017-05-03 |  | 5d |  |  | 张磊 | 16h |
| 10 | 3.2 | 页面布局 |  | 5d | 2017-05-04 | 2017-05-10 |  | 38d |  | start no earlier than 2017-05-04 | 张磊 | 40h |
| 11 | 4 | **开发** |  | 24d | 2017-05-02 | 2017-06-02 |  |  |  |  |  | 536h |
| 12 | 4.1 | 确定模块化/分层设计参数 |  | 1d | 2017-05-02 | 2017-05-02 |  | 20d | 0d |  | 柳鹏; 张闯 | 16h |
| 13 | 4.2 | **编写代码** |  | 18d | 2017-05-03 | 2017-05-26 | 12 |  |  |  |  | 400h |
| 14 | 4.2.1 | 网站集建立与配置 |  | 1d | 2017-05-03 | 2017-05-03 |  | 17d |  |  | 柳鹏; 张闯 | 16h |
| 15 | 4.2.2 | 订阅与推送 |  | 3d | 2017-05-04 | 2017-05-08 |  | 19d |  | start no earlier than 2017-05-04 | 张闯 | 24h |
| 16 | 4.2.3 | 资料点评 |  | 2d | 2017-05-09 | 2017-05-10 |  | 17d |  | start no earlier than 2017-05-09 | 张闯; 陈佳荧 | 32h |
| 17 | 4.2.4 | 资料打分 |  | 2d | 2017-05-11 | 2017-05-12 |  | 15d |  | start no earlier than 2017-05-11 | 张闯; 陈佳荧 | 32h |
| 18 | 4.2.5 | 资料打分统计 |  | 2d | 2017-05-15 | 2017-05-16 |  | 13d |  | start no earlier than 2017-05-15 | 张闯; 陈佳荧 | 32h |
| 19 | 4.2.6 | 操作日志管理（记录、查看） |  | 2d | 2017-05-17 | 2017-05-18 |  | 11d |  | start no earlier than 2017-05-17 | 张闯; 陈佳荧 | 32h |
| 20 | 4.2.7 | 文档热度报表查看与导出 |  | 3d | 2017-05-19 | 2017-05-23 |  | 8d |  | start no earlier than 2017-05-19 | 张闯; 陈佳荧 | 48h |
| 21 | 4.2.8 | 文档好评度报表查看与导出 |  | 3d | 2017-05-24 | 2017-05-26 |  | 5d |  | start no earlier than 2017-05-24 | 张闯; 陈佳荧 | 48h |
| 22 | 4.2.9 | 全文检索 |  | 2d | 2017-05-04 | 2017-05-05 |  | 20d |  | start no earlier than 2017-05-04 | 柳鹏 | 16h |
| 23 | 4.2.10 | eLearning平台集成登陆 |  | 2d | 2017-05-08 | 2017-05-09 |  | 18d |  | start no earlier than 2017-05-08 | 柳鹏 | 16h |
| 24 | 4.2.11 | 外部人员账号管理 |  | 4d | 2017-05-10 | 2017-05-15 |  | 14d |  | start no earlier than 2017-05-10 | 柳鹏 | 32h |
| 25 | 4.2.12 | 自动同步PeopleSoft权限 |  | 5d | 2017-05-16 | 2017-05-22 |  | 9d |  | start no earlier than 2017-05-16 | 柳鹏 | 40h |
| 26 | 4.2.13 | OU、角色授权配置 |  | 4d | 2017-05-23 | 2017-05-26 |  | 5d |  | start no earlier than 2017-05-23 | 柳鹏 | 32h |
| 27 | 4.3 | 开发人员测试(初步调试) |  | 5d | 2017-05-29 | 2017-06-02 |  | 0d |  | start no earlier than 2017-05-29 | 陈佳荧; 张闯; 柳鹏 | 120h |
| 28 | 4.4 | 开发工作完毕 | milestone | 0d | 2017-06-02 | 2017-06-02 | 27 | 0d |  |  | 柳鹏; 张闯; 陈佳荧 |  |
