# 海外营销资料平台开发计划V0.8

Schedule from MS Project, 2017-05-08 to 2017-06-23.

## Calendars

- 标准: Mon-Fri 08:00-12:00, 13:00-17:00; Sat-Sun off.

## Resources

| Resource |
| --- |
| 管理人员 |
| 项目经理 |
| 分析人员 |
| 柳鹏 |
| 测试人员 |
| 培训人员 |
| 技术联络人员 |
| 部署小组 |
| 张闯 |
| 陈佳荧 |
| 赵文磊 |
| 张磊 |
| 程飞飞 |
| 客户配合 |
| 刘涛 |
| 微软技术支持 |

## Schedule

| ID | WBS | Task | Type | Duration | Start | Finish | Predecessors | Total slack | Free slack | Constraint | Resources | Work |
| --- | --- | --- | --- | --- | --- | --- | --- | --- | --- | --- | --- | --- |
| 1 | 1 | **环境准备** |  | 10d | 2017-05-08 08:00 | 2017-05-19 17:00 |  | 14d |  |  |  | 80h |
| 2 | 1.1 | 基础环境准备 |  | 6d | 2017-05-08 08:00 | 2017-05-15 17:00 |  | 14d | 0d | start no earlier than 2017-05-08 08:00 | 赵文磊 | 48h |
| 3 | 1.2 | SQL Server 部署 |  | 2d | 2017-05-16 08:00 | 2017-05-17 17:00 | 2 | 14d | 0d | start no earlier than 2017-05-09 08:00 | 赵文磊 | 16h |
| 4 | 1.3 | SharePoint 2016环境部署 |  | 2d | 2017-05-18 08:00 | 2017-05-19 17:00 | 3 | 14d | 0d | start no earlier than 2017-05-11 08:00 | 赵文磊 | 16h |
| 5 | 2 | **配置** |  | 3.5d | 2017-05-22 08:00 | 2017-05-25 12:00 |  | 21.5d |  |  |  | 28h |
| 6 | 2.1 | **权限配置** |  | 3.5d | 2017-05-22 08:00 | 2017-05-25 12:00 |  | 21.5d |  |  |  | 28h |
| 7 | 2.1.1 | 配置普通用户权限（上传、下载、查看） |  | 0.15d | 2017-05-22 08:00 | 2017-05-22 09:12 | 4 | 21.5d | 0d |  | 赵文磊 | 1.2h |
| 8 | 2.1.2 | 配置子目录管理员权限 |  | 0.15d | 2017-05-22 09:12 | 2017-05-22 10:24 | 7 | 21.5d | 0d |  | 赵文磊 | 1.2h |
| 9 | 2.1.3 | 配置删除文件用户权限 |  | 0.2d | 2017-05-22 10:24 | 2017-05-22 12:00 | 8 | 21.5d | 0d |  | 赵文磊 | 1.6h |
| 10 | 2.1.4 | 外部人员登录配置（Perimeter） |  | 3d | 2017-05-22 13:00 | 2017-05-25 12:00 | 9 | 21.5d | 0d |  | 赵文磊 | 24h |
| 11 | 2.2 | **权限管理、认证** |  | 0d | 2017-05-25 12:00 | 2017-05-25 12:00 |  | 21.5d |  |  |  |  |
| 12 | 2.2.1 | 集成域控登录 | milestone | 0d | 2017-05-25 12:00 | 2017-05-25 12:00 | 10 | 21.5d | 0d |  | 赵文磊 |  |
| 13 | 2.2.2 | 三种按域控授权的方式（以78自定义用户组的方式实现OU授权） | milestone | 0d | 2017-05-25 12:00 | 2017-05-25 12:00 | 12 | 21.5d | 0d |  | 赵文磊 |  |
| 14 | 2.2.3 | 系统管理员 | milestone | 0d | 2017-05-25 12:00 | 2017-05-25 12:00 | 13 | 21.5d | 0d |  | 赵文磊 |  |
| 15 | 2.2.4 | 分目录管理员 | milestone | 0d | 2017-05-25 12:00 | 2017-05-25 12:00 | 14 | 21.5d |  |  | 赵文磊 |  |
| 16 | 3 | **需求调研** |  | 7d | 2017-05-08 08:00 | 2017-05-16 17:00 |  | 0d |  |  |  | 85.6h |
| 17 | 3.1 | **功能需求调研** |  | 2d | 2017-05-08 08:00 | 2017-05-09 17:00 |  | 0d |  |  |  | 45.6h |
| 18 | 3.1.1 | 搜索 |  | 0.1d | 2017-05-08 08:00 | 2017-05-08 08:48 |  | 0d |  | start no earlier than 2017-05-08 08:00 |  |  |
| 19 | 3.1.2 | RMS加密 |  | 0.1d | 2017-05-08 08:48 | 2017-05-08 09:36 | 18 | 0d |  |  | 程飞飞; 刘涛; 柳鹏 | 2.4h |
| 20 | 3.1.3 | 上传、下载权限控制 |  | 0.1d | 2017-05-08 09:36 | 2017-05-08 10:24 | 19 | 0d |  |  | 程飞飞; 刘涛; 柳鹏 | 2.4h |
| 21 | 3.1.4 | 文档审批 |  | 0.1d | 2017-05-08 10:24 | 2017-05-08 11:12 | 20 | 0d |  |  | 程飞飞; 刘涛; 柳鹏 | 2.4h |
| 22 | 3.1.5 | 版本管理 |  | 0.1d | 2017-05-08 11:12 | 2017-05-08 12:00 | 21 | 0d |  |  | 程飞飞; 刘涛; 柳鹏 | 2.4h |
| 23 | 3.1.6 | 同名文件监测策略 |  | 0.1d | 2017-05-08 13:00 | 2017-05-08 13:48 | 22 | 0d |  |  | 程飞飞; 刘涛; 柳鹏 | 2.4h |
| 24 | 3.1.7 | 目录管理,文件夹、文件权限控制 |  | 0.1d | 2017-05-08 13:48 | 2017-05-08 14:36 | 23 | 0d |  |  | 程飞飞; 刘涛; 柳鹏 | 2.4h |
| 25 | 3.1.8 | 资料点评 |  | 0.1d | 2017-05-08 14:36 | 2017-05-08 15:24 | 24 | 0d |  |  | 程飞飞; 刘涛; 柳鹏 | 2.4h |
| 26 | 3.1.9 | 资料点评数据分析 |  | 0.1d | 2017-05-08 15:24 | 2017-05-08 16:12 | 25 | 0d |  |  | 程飞飞; 刘涛; 柳鹏 | 2.4h |
| 27 | 3.1.10 | Elearning SSO |  | 0.1d | 2017-05-08 16:12 | 2017-05-08 17:00 | 26 | 0d |  |  | 程飞飞; 刘涛; 柳鹏 | 2.4h |

| ID | WBS | Task | Duration | Start | Finish | Predecessors | Total slack | Free slack | Constraint | Resources | Work |
| --- | --- | --- | --- | --- | --- | --- | --- | --- | --- | --- | --- |
| 28 | 3.1.11 | **权限管理** | 0.5d | 2017-05-09 08:00 | 2017-05-09 12:00 |  | 0d |  |  |  | 12h |
| 29 | 3.1.11.1 | 外部人员账号登录 | 0.1d | 2017-05-09 08:00 | 2017-05-09 08:48 | 27 | 0d |  |  | 程飞飞; 刘涛; 柳鹏 | 2.4h |
| 30 | 3.1.11.2 | 外部人员账号管理员维护 | 0.1d | 2017-05-09 08:48 | 2017-05-09 09:36 | 29 | 0d |  |  | 程飞飞; 刘涛; 柳鹏 | 2.4h |
| 31 | 3.1.11.3 | 管理员（增删改）用户组（自定义组） | 0.1d | 2017-05-09 09:36 | 2017-05-09 10:24 | 30 | 0d |  |  | 程飞飞; 刘涛; 柳鹏 | 2.4h |
| 32 | 3.1.11.4 | 按部门、组、用户三种维度授权 | 0.1d | 2017-05-09 10:24 | 2017-05-09 11:12 | 31 | 0d |  |  | 程飞飞; 刘涛; 柳鹏 | 2.4h |
| 33 | 3.1.11.5 | 分目录管理员维护 | 0.1d | 2017-05-09 11:12 | 2017-05-09 12:00 | 32 | 0d |  |  | 程飞飞; 刘涛; 柳鹏 | 2.4h |
| 34 | 3.1.12 | 文件操作日志 | 0.1d | 2017-05-09 13:00 | 2017-05-09 13:48 | 33 | 0d |  |  | 程飞飞; 刘涛; 柳鹏 | 2.4h |
| 35 | 3.1.13 | 目录操作日志 | 0.1d | 2017-05-09 13:48 | 2017-05-09 14:36 | 34 | 0d |  |  | 程飞飞; 刘涛; 柳鹏 | 2.4h |
| 36 | 3.1.14 | 用户管理日志 | 0.1d | 2017-05-09 14:36 | 2017-05-09 15:24 | 35 | 0d |  |  | 程飞飞; 刘涛; 柳鹏 | 2.4h |
| 37 | 3.1.15 | 用户界面 | 0.2d | 2017-05-09 15:24 | 2017-05-09 17:00 | 36 | 0d |  |  | 程飞飞; 张磊; 刘涛 | 4.8h |
| 38 | 3.2 | **文档原型输出** | 5d | 2017-05-10 08:00 | 2017-05-16 17:00 |  | 0d |  |  |  | 40h |
| 39 | 3.2.1 | 需求说明文档 | 2d | 2017-05-10 08:00 | 2017-05-11 17:00 | 37 | 0d |  |  | 程飞飞 | 16h |
| 40 | 3.2.2 | 原型设计 | 3d | 2017-05-12 08:00 | 2017-05-16 17:00 | 39 | 0d |  |  | 程飞飞 | 24h |
| 41 | 4 | **UI设计** | 12d | 2017-05-10 08:00 | 2017-05-25 17:00 |  | 0d |  |  |  | 72h |
| 42 | 4.1 | **页面配色** | 7d | 2017-05-10 08:00 | 2017-05-18 17:00 |  | 0d |  |  |  | 32h |
| 43 | 4.1.1 | 客户方提供企业VI相关信息 | 2d | 2017-05-10 08:00 | 2017-05-11 17:00 | 37 | 3d |  |  | 客户配合 | 16h |
| 44 | 4.1.2 | 分析VI、设计配色 | 2d | 2017-05-17 08:00 | 2017-05-18 17:00 | 40, 43 | 0d |  |  | 张磊 | 16h |
| 45 | 4.2 | 页面布局,UI设计 | 5d | 2017-05-19 08:00 | 2017-05-25 17:00 | 44 | 0d |  | start no earlier than 2017-05-04 08:00 | 张磊 | 40h |
| 46 | 5 | **开发** | 24d | 2017-05-09 08:00 | 2017-06-09 17:00 |  | 10d |  |  |  | 912h |
| 47 | 5.1 | **方案设计** | 6d | 2017-05-12 08:00 | 2017-05-19 17:00 |  | 25d |  |  |  | 96h |
| 48 | 5.1.1 | 确定模块化/分层设计参数,方案设计、架构设计 | 3d | 2017-05-12 08:00 | 2017-05-16 17:00 | 39 | 25d | 0d |  | 柳鹏; 张闯 | 48h |
| 49 | 5.1.2 | 后台API梳理、封装 | 3d | 2017-05-17 08:00 | 2017-05-19 17:00 | 48 | 25d |  |  | 柳鹏; 张闯 | 48h |
| 50 | 5.2 | **网站集建立与配置** | 1d | 2017-05-22 08:00 | 2017-05-22 17:00 |  | 14d |  |  |  | 16h |
| 51 | 5.2.1 | 新建资料管理中心站点 | 0.5d | 2017-05-22 08:00 | 2017-05-22 12:00 | 4 | 14d | 0d |  | 柳鹏; 张闯 | 8h |
| 52 | 5.2.2 | 资料管理中心站点配置 | 0.5d | 2017-05-22 13:00 | 2017-05-22 17:00 | 51 | 14d | 0d |  | 柳鹏; 张闯 | 8h |

| ID | WBS | Task | Type | Duration | Start | Finish | Predecessors | Total slack | Free slack | Constraint | Resources | Work |
| --- | --- | --- | --- | --- | --- | --- | --- | --- | --- | --- | --- | --- |
| 53 | 5.3 | **前端界面实现** |  | 5d | 2017-05-26 08:00 | 2017-06-01 17:00 |  | 16d |  |  |  | 40h |
| 54 | 5.3.1 | 前端界面按照UI设计图实现 |  | 5d | 2017-05-26 08:00 | 2017-06-01 17:00 | 45 | 16d |  |  | 陈佳荧 | 40h |
| 55 | 5.4 | **搜索** |  | 0d | 2017-05-22 17:00 | 2017-05-22 17:00 |  | 14d |  |  |  |  |
| 56 | 5.4.1 | 全文检索 | milestone | 0d | 2017-05-22 17:00 | 2017-05-22 17:00 | 52 | 14d | 0d |  | 柳鹏 |  |
| 57 | 5.5 | **文件及目录访问权限控制** |  | 0d | 2017-05-22 17:00 | 2017-05-22 17:00 |  | 14d |  |  |  |  |
| 58 | 5.5.1 | 上传、下载权限控制 | milestone | 0d | 2017-05-22 17:00 | 2017-05-22 17:00 | 56 | 14d | 0d |  |  |  |
| 59 | 5.5.2 | 删除权限控制 | milestone | 0d | 2017-05-22 17:00 | 2017-05-22 17:00 | 58 | 14d | 0d |  |  |  |
| 60 | 5.6 | **文件传输** |  | 0d | 2017-05-22 17:00 | 2017-05-22 17:00 |  | 14d |  |  |  |  |
| 61 | 5.6.1 | 通过浏览器上传下载支持最大文件为2GB | milestone | 0d | 2017-05-22 17:00 | 2017-05-22 17:00 | 59 | 14d | 0d |  |  |  |
| 62 | 5.6.2 | 文件上传至指定目录 | milestone | 0d | 2017-05-22 17:00 | 2017-05-22 17:00 | 61 | 14d | 0d |  |  |  |
| 63 | 5.6.3 | 文件下载 | milestone | 0d | 2017-05-22 17:00 | 2017-05-22 17:00 | 62 | 14d | 0d |  |  |  |
| 64 | 5.7 | **文件版本管理** |  | 0d | 2017-05-22 17:00 | 2017-05-22 17:00 |  | 14d |  |  |  |  |
| 65 | 5.7.1 | 同步目录同名文件检测 | milestone | 0d | 2017-05-22 17:00 | 2017-05-22 17:00 | 63 | 14d | 0d |  |  |  |
| 66 | 5.7.2 | 历史版本管理 | milestone | 0d | 2017-05-22 17:00 | 2017-05-22 17:00 | 65 | 14d | 0d |  |  |  |
| 67 | 5.8 | **目录管理** |  | 0d | 2017-05-22 17:00 | 2017-05-22 17:00 |  | 14d |  |  |  |  |
| 68 | 5.8.1 | 顶级目录管理 | milestone | 0d | 2017-05-22 17:00 | 2017-05-22 17:00 | 66 | 14d | 0d |  |  |  |
| 69 | 5.8.2 | 目录之下可设置子目录 | milestone | 0d | 2017-05-22 17:00 | 2017-05-22 17:00 | 68 | 14d | 0d |  |  |  |
| 70 | 5.8.3 | 子目录权限继承 | milestone | 0d | 2017-05-22 17:00 | 2017-05-22 17:00 | 69 | 14d | 0d |  |  |  |
| 71 | 5.9 | **文件安全** |  | 15d | 2017-05-09 08:00 | 2017-05-29 17:00 |  | 19d |  |  |  | 360h |
| 72 | 5.9.1 | 删除文件找回 | milestone | 0d | 2017-05-22 17:00 | 2017-05-22 17:00 | 70 | 14d | 0d |  |  |  |
| 73 | 5.9.2 | 文件已加密,下载时提供加密文件 | milestone | 0d | 2017-05-22 17:00 | 2017-05-22 17:00 | 72 | 14d | 0d |  |  |  |
| 74 | 5.9.3 | 文件上传时RMS加密。不同文件设置不同加密权限 |  | 15d | 2017-05-09 08:00 | 2017-05-29 17:00 | 19 | 19d |  | start no earlier than 2017-05-09 08:00 | 刘涛; 微软技术支持; 赵文磊 | 360h |
| 75 | 5.10 | **文档审批** |  | 3d | 2017-05-22 17:00 | 2017-05-25 17:00 |  | 14d |  |  |  | 24h |
| 76 | 5.10.1 | 文档上传审批后开放 | milestone | 0d | 2017-05-22 17:00 | 2017-05-22 17:00 | 73 | 14d | 0d |  | 柳鹏 |  |
| 77 | 5.10.2 | 文档审批通知 |  | 1.5d | 2017-05-23 08:00 | 2017-05-24 12:00 | 76 | 14d | 0d |  | 柳鹏 | 12h |
| 78 | 5.10.3 | 文档审批结果反馈 |  | 1.5d | 2017-05-24 13:00 | 2017-05-25 17:00 | 77 | 14d | 0d |  | 柳鹏 | 12h |

| ID | WBS | Task | Duration | Start | Finish | Predecessors | Total slack | Free slack | Resources | Work |
| --- | --- | --- | --- | --- | --- | --- | --- | --- | --- | --- |
| 79 | 5.11 | **OU、角色授权配置** | 5d | 2017-05-26 08:00 | 2017-06-01 17:00 |  | 14d |  |  | 40h |
| 80 | 5.11.1 | 管理员增删改自定义组 | 5d | 2017-05-26 08:00 | 2017-06-01 17:00 | 78 | 14d | 0d | 柳鹏 | 40h |
| 81 | 5.12 | **E-Learning SSO** | 20d | 2017-05-09 08:00 | 2017-06-05 17:00 |  | 14d |  |  | 160h |
| 82 | 5.12.1 | 客户提供SSO方法（链接或API） | 18d | 2017-05-09 08:00 | 2017-06-01 17:00 | 27 | 14d | 0d | 客户配合 | 144h |
| 83 | 5.12.2 | E-Learning SSO集成 | 2d | 2017-06-02 08:00 | 2017-06-05 17:00 | 82, 80 | 14d |  | 柳鹏 | 16h |
| 84 | 5.13 | **资料点评** | 6d | 2017-05-26 08:00 | 2017-06-02 17:00 |  | 0d |  |  | 96h |
| 85 | 5.13.1 | 资料点评、打分 | 4d | 2017-05-26 08:00 | 2017-05-31 17:00 | 45 | 0d |  | 陈佳荧; 张闯 | 64h |
| 86 | 5.13.2 | 资料点评打分数据分析 | 2d | 2017-06-01 08:00 | 2017-06-02 17:00 | 85 | 0d |  | 陈佳荧; 张闯 | 32h |
| 87 | 5.14 | **操作管理日志** | 5d | 2017-06-05 08:00 | 2017-06-09 17:00 |  | 0d |  |  | 80h |
| 88 | 5.14.1 | 文件操作日志 | 1.5d | 2017-06-05 08:00 | 2017-06-06 12:00 | 86 | 0d |  | 陈佳荧; 张闯 | 24h |
| 89 | 5.14.2 | 目录操作日志 | 1.5d | 2017-06-06 13:00 | 2017-06-07 17:00 | 88 | 0d |  | 陈佳荧; 张闯 | 24h |
| 90 | 5.14.3 | 用户管理日志 | 2d | 2017-06-08 08:00 | 2017-06-09 17:00 | 89 | 0d |  | 陈佳荧; 张闯 | 32h |
| 91 | 6 | **测试** | 10d | 2017-06-12 08:00 | 2017-06-23 17:00 |  | 0d |  |  | 208h |
| 92 | 6.1 | 功能自测 | 4d | 2017-06-12 08:00 | 2017-06-15 17:00 | 90 | 0d |  | 测试人员; 陈佳荧; 柳鹏; 张闯; 刘涛 | 160h |
| 93 | 6.2 | UAT | 6d | 2017-06-16 08:00 | 2017-06-23 17:00 | 92 | 0d |  | 客户配合 | 48h |
